# Projet batiment R+2

Schedule from ProjectLibre, 2026-01-01 to 2026-09-02.

## Calendars

- Standard: Mon-Fri 08:00-12:00, 13:00-17:00; Sat-Sun off.

## Resources

| Resource | Group | Rate |
| --- | --- | --- |
| Non attribué |  |  |
| Employes |  |  |
| Chef de chantier | 1 | 375 |
| Maçons | 2 | 310 |
| Coffreurs | 3 | 300 |
| Ferrailleurs | 4 | 300 |
| Manœuvres | 5 | 200 |
| Conducteur | 6 | 310 |
| Grutier | 7 | 320 |
| Topographe | 8 | 250 |
| Materiels |  |  |
| Pelle mécanique | 9 |  |
| Grue | 10 |  |
| Rouleau compresseur | 11 |  |
| Camion |  |  |

## Schedule

| ID | WBS | Task | Duration | Start | Finish | Predecessors | Resources |
| --- | --- | --- | --- | --- | --- | --- | --- |
| 1 | 1 | **Préparation du chantier** | 7d | 2026-01-01 | 2026-01-09 |  |  |
| 2 | 1.1 | Installation de chantier | 3d | 2026-01-01 | 2026-01-05 |  | Chef de chantier; Manœuvres [300%] |
| 3 | 1.2 | Clôture + signalisation | 2d | 2026-01-06 | 2026-01-07 | 2 | Chef de chantier; Manœuvres [300%] |
| 4 | 1.3 | Implantation topographique | 2d | 2026-01-08 | 2026-01-09 | 3 | Chef de chantier; Manœuvres; Topographe |
| 6 | 2 | **Terrassement** | 6d | 2026-01-12 | 2026-01-19 | 1 |  |
| 7 | 2.1 | Décapage | 1d | 2026-01-12 | 2026-01-12 |  | Chef de chantier; Manœuvres [200%]; Conducteur |
| 8 | 2.2 | Fouilles | 3d | 2026-01-13 | 2026-01-15 | 7 | Chef de chantier; Manœuvres [200%]; Conducteur [200%]; Camion |
| 9 | 2.3 | Nivellement + compactage | 2d | 2026-01-16 | 2026-01-19 | 8 | Chef de chantier; Manœuvres [200%] |
| 11 | 3 | **Fondation** | 13d | 2026-01-20 | 2026-02-05 | 6 |  |
| 12 | 3.1 | Coffrage fondations | 2d | 2026-01-20 | 2026-01-21 |  | Coffreurs [400%]; Manœuvres [400%] |
| 13 | 3.2 | Ferraillage fondations | 2d | 2026-01-20 | 2026-01-21 |  | Ferrailleurs [400%]; Manœuvres [200%] |
| 14 | 3.3 | Bétonnage fondations | 1d | 2026-01-22 | 2026-01-22 | 13, 12 | Maçons [400%]; Chef de chantier; Manœuvres [500%] |
| 15 | 3.4 | Cure béton | 10d | 2026-01-23 | 2026-02-05 | 14 | Coffreurs [400%]; Manœuvres [400%] |
| 17 | 4 | **Soubassement** | 18d | 2026-02-06 | 2026-03-03 | 11 |  |
| 18 | 4.1 | Élévation murs de soubassement | 2d | 2026-02-06 | 2026-02-09 |  |  |
| 19 | 4.2 | Remblaiement périphérique | 2d | 2026-02-10 | 2026-02-11 | 18 |  |
| 20 | 4.3 | Dallage RDC | 4d | 2026-02-12 | 2026-02-17 | 19 | Chef de chantier; Maçons [200%]; Coffreurs [400%]; Ferrailleurs [400%]; Manœuvres [600%] |
| 21 | 4.4 | Cure | 10d | 2026-02-18 | 2026-03-03 | 20 | Coffreurs [400%]; Manœuvres [400%] |
| 23 | 5 | **Structure du RDC** | 41d | 2026-03-04 | 2026-04-29 | 17 |  |
| 24 | 5.1 | **Poteaux** | 14d | 2026-03-04 | 2026-03-23 |  |  |
| 25 | 5.1.1 | Coffrage | 3d | 2026-03-04 | 2026-03-06 |  | Coffreurs [400%]; Manœuvres [400%] |
| 26 | 5.1.2 | Ferraillage | 2d | 2026-03-04 | 2026-03-05 |  | Ferrailleurs [400%]; Manœuvres [200%] |
| 27 | 5.1.3 | Bétonnage | 1d | 2026-03-09 | 2026-03-09 | 25, 26 | Chef de chantier; Manœuvres [600%]; Maçons [600%] |
| 28 | 5.1.4 | Décoffrage+cure | 10d | 2026-03-10 | 2026-03-23 | 27 | Coffreurs [400%]; Manœuvres [400%] |

| ID | WBS | Task | Duration | Start | Finish | Predecessors | Resources |
| --- | --- | --- | --- | --- | --- | --- | --- |
| 30 | 5.2 | **Poutres+Dalle** | 27d | 2026-03-24 | 2026-04-29 | 24 |  |
| 31 | 5.2.1 | Coffrage | 5d | 2026-03-24 | 2026-03-30 |  | Coffreurs [400%]; Manœuvres [400%] |
| 32 | 5.2.2 | Ferraillage | 3d | 2026-03-24 | 2026-03-26 |  | Ferrailleurs [400%]; Manœuvres [200%] |
| 33 | 5.2.3 | Bétonnage | 2d | 2026-03-31 | 2026-04-01 | 31, 32 | Chef de chantier; Manœuvres [600%]; Maçons [600%] |
| 34 | 5.2.4 | Décoffrage+cure | 10d | 2026-04-02 | 2026-04-15 | 33 | Coffreurs [400%]; Manœuvres [400%] |
| 35 | 5.2.5 | Escalier | 10d | 2026-04-16 | 2026-04-29 | 34 | Coffreurs [400%]; Ferrailleurs [400%]; Manœuvres [600%] |
| 37 | 6 | **Structure du 1ere etage** | 41d | 2026-04-30 | 2026-06-25 | 23 |  |
| 38 | 6.1 | **Poteaux** | 14d | 2026-04-30 | 2026-05-19 |  |  |
| 39 | 6.1.1 | Coffrage | 3d | 2026-04-30 | 2026-05-04 |  | Coffreurs [400%]; Manœuvres [400%] |
| 40 | 6.1.2 | Ferraillage | 2d | 2026-04-30 | 2026-05-01 |  | Ferrailleurs [400%]; Manœuvres [200%] |
| 41 | 6.1.3 | Bétonnage | 1d | 2026-05-05 | 2026-05-05 | 39, 40 | Chef de chantier; Manœuvres [600%]; Maçons [600%] |
| 42 | 6.1.4 | Décoffrage+cure | 10d | 2026-05-06 | 2026-05-19 | 41 | Coffreurs [400%]; Manœuvres [400%] |
| 44 | 6.2 | **Poutres+Dalle** | 27d | 2026-05-20 | 2026-06-25 | 38 |  |
| 45 | 6.2.1 | Coffrage | 5d | 2026-05-20 | 2026-05-26 |  | Coffreurs [400%]; Manœuvres [400%] |
| 46 | 6.2.2 | Ferraillage | 3d | 2026-05-20 | 2026-05-22 |  | Ferrailleurs [400%]; Manœuvres [200%] |
| 47 | 6.2.3 | Bétonnage | 2d | 2026-05-27 | 2026-05-28 | 45, 46 | Chef de chantier; Manœuvres [600%]; Maçons [600%] |
| 48 | 6.2.4 | Décoffrage+cure | 10d | 2026-05-29 | 2026-06-11 | 47 | Coffreurs [400%]; Manœuvres [400%] |
| 49 | 6.2.5 | Escalier | 10d | 2026-06-12 | 2026-06-25 | 48 | Coffreurs [400%]; Ferrailleurs [400%]; Manœuvres [600%] |
| 52 | 7 | **Structure du 2eme etage** | 41d | 2026-06-26 | 2026-08-21 | 37 |  |
| 53 | 7.1 | **Poteaux** | 14d | 2026-06-26 | 2026-07-15 |  |  |
| 54 | 7.1.1 | Coffrage | 3d | 2026-06-26 | 2026-06-30 |  | Coffreurs [400%]; Manœuvres [400%] |
| 55 | 7.1.2 | Ferraillage | 2d | 2026-06-26 | 2026-06-29 |  | Ferrailleurs [400%]; Manœuvres [200%] |
| 56 | 7.1.3 | Bétonnage | 1d | 2026-07-01 | 2026-07-01 | 55, 54 | Chef de chantier; Manœuvres [600%]; Maçons [600%] |
| 57 | 7.1.4 | Décoffrage+cure | 10d | 2026-07-02 | 2026-07-15 | 56 | Coffreurs [400%]; Manœuvres [400%] |

| ID | WBS | Task | Duration | Start | Finish | Predecessors | Resources |
| --- | --- | --- | --- | --- | --- | --- | --- |
| 59 | 7.2 | **Poutres+Dalle** | 27d | 2026-07-16 | 2026-08-21 | 53 |  |
| 60 | 7.2.1 | Coffrage | 5d | 2026-07-16 | 2026-07-22 |  | Coffreurs [400%]; Manœuvres [400%] |
| 61 | 7.2.2 | Ferraillage | 3d | 2026-07-16 | 2026-07-20 |  | Ferrailleurs [400%]; Manœuvres [200%] |
| 62 | 7.2.3 | Bétonnage | 2d | 2026-07-23 | 2026-07-24 | 60, 61 | Chef de chantier; Manœuvres [600%]; Maçons [600%] |
| 63 | 7.2.4 | Décoffrage+cure | 10d | 2026-07-27 | 2026-08-07 | 62 | Coffreurs [400%]; Manœuvres [400%] |
| 64 | 7.2.5 | Escalier | 10d | 2026-08-10 | 2026-08-21 | 63 | Coffreurs [400%]; Ferrailleurs [400%]; Manœuvres [600%] |
| 67 | 8 | **Murs** | 5d | 2026-08-24 | 2026-08-28 | 52 |  |
| 68 | 8.1 | Murs RDC | 5d | 2026-08-24 | 2026-08-28 |  | Maçons [200%]; Manœuvres [200%]; Chef de chantier |
| 69 | 8.2 | Murs étage 1 | 5d | 2026-08-24 | 2026-08-28 |  | Manœuvres [200%]; Maçons [200%] |
| 70 | 8.3 | Murs étage 2 | 5d | 2026-08-24 | 2026-08-28 |  | Manœuvres [200%]; Maçons [200%] |
| 73 | 9 | **Fin de chantier** | 3d | 2026-08-31 | 2026-09-02 | 67 |  |
| 74 | 9.1 | Nettoyage chantier | 2d | 2026-08-31 | 2026-09-01 |  | Manœuvres [600%] |
| 75 | 9.2 | Retrait installations | 1d | 2026-09-02 | 2026-09-02 | 74 | Chef de chantier; Manœuvres [400%] |
