# Hangar industriel de stockage

Schedule from ProjectLibre, 2025-12-15 to 2026-03-13.

## Calendars

- Standard: Mon-Fri 08:00-12:00, 13:00-17:00; Sat-Sun off.

## Resources

| Resource | Rate |
| --- | --- |
| Non attribué |  |
| Ressources humainse |  |
| Chef de chantier | 20 |
| Topographe | 15 |
| Ouvrier A | 11 |
| Ouvrier B | 11 |
| Ouvrier C | 11 |
| Ouvrier D | 11 |
| Ouvrier E | 11 |
| Conducteur A | 13 |
| Conducteur B | 13 |
| Macon A | 13 |
| Macon B | 13 |
| Macon C | 13 |
| Macon D | 13 |
| Monteur A | 12 |
| Monteur B | 12 |
| Monteur C | 12 |
| Monteur D | 12 |
| Grutier | 15 |
| Soudeur A | 13 |
| Soudeur B | 13 |
| Metallier A | 13 |
| Mettalier B | 13 |
| Ingenieur | 20 |
| Materiels |  |
| Niveau | 100 |
| Theodolite | 10 |
| piquets | 10 |
| Pelle mecanique | 3000 |
| Camion | 1000 |
| Brouette | 50 |
| Aiguille vibrante | 100 |
| Camion plateaux | 800 |
| Grue mobile | 3500 |
| Nacelle | 8000 |
| Materiaux |  |
| Baraque | 1000 |
| Pannaux | 1000 |
| Clotures | 700 |
| Beton pret a l'emploi | 13000 |
| Briques | 600 |
| Pannaux de coffrage | 1000 |
| Aciers | 7000 |
| Platines d'ancrage | 1500 |
| Pannaux sandwich | 10000 |
| Profiles IPE,HEA | 30000 |

## Schedule

| ID | WBS | Task | Duration | Start | Finish | Predecessors | Resources |
| --- | --- | --- | --- | --- | --- | --- | --- |
| 1 | 1 | **Implantation du chantier** | 5d | 2025-12-15 | 2025-12-19 |  |  |
| 2 | 1.1 | Implantation, nivaux | 1d | 2025-12-15 | 2025-12-15 |  | Chef de chantier; Ouvrier A; Theodolite; Topographe; piquets |
| 3 | 1.2 | Piquetage fondations | 1d | 2025-12-16 | 2025-12-16 | 2 | Chef de chantier; Topographe; Ouvrier A; Theodolite; piquets |
| 4 | 1.3 | Baraque chantier | 1d | 2025-12-17 | 2025-12-17 | 3 | Baraque; Chef de chantier; Clotures; Ouvrier A; Ouvrier B; Pannaux |
| 5 | 1.4 | Stockage matériaux | 1d | 2025-12-18 | 2025-12-18 | 4 | Chef de chantier; Ouvrier A; Ouvrier B |
| 6 | 1.5 | Signalisation et sécurité | 1d | 2025-12-19 | 2025-12-19 | 5 | Chef de chantier; Ouvrier A; Ouvrier B |
| 8 | 2 | **TERRASSEMENT** | 6d | 2025-12-22 | 2025-12-29 | 1 |  |
| 9 | 2.1 | Décapage terrain | 2d | 2025-12-22 | 2025-12-23 |  | Brouette; Camion; Conducteur A; Conducteur B; Ouvrier A; Ouvrier B; Pelle mecanique |
| 10 | 2.2 | Fouilles pour semelle isolees | 3d | 2025-12-24 | 2025-12-26 | 9 | Brouette; Camion; Conducteur A; Conducteur B; Ouvrier A; Ouvrier B; Pelle mecanique |
| 11 | 2.3 | Evacuations des debris | 1d | 2025-12-29 | 2025-12-29 | 10 | Ouvrier A; Ouvrier B; Conducteur A; Conducteur B; Pelle mecanique; Camion; Brouette |
| 13 | 3 | **Fondation en BA** | 18d | 2025-12-30 | 2026-01-22 | 8 |  |
| 14 | 3.1 | Béton de propreté | 2d | 2025-12-30 | 2025-12-31 |  | Ouvrier A; Ouvrier B; Macon A; Macon B; Aiguille vibrante; Beton pret a l'emploi |
| 15 | 3.2 | Coffrage semelles | 4d | 2026-01-01 | 2026-01-06 | 14 | Ouvrier A; Ouvrier B; Macon A; Macon B; Pannaux; Briques; Pannaux de coffrage |
| 16 | 3.3 | Ferraillage semelles | 4d | 2025-12-30 | 2026-01-02 |  | Aciers; Ouvrier C; Ouvrier D; Macon C; Macon D |
| 17 | 3.4 | Pose des tiges d’ancrage | 2d | 2026-01-07 | 2026-01-08 | 15, 16 | Chef de chantier; Ouvrier A; Ouvrier B; Macon A; Macon B; Platines d'ancrage |
| 18 | 3.5 | Bétonnage semelles | 2d | 2026-01-09 | 2026-01-12 | 17 | Ouvrier A; Ouvrier B; Macon A; Macon B; Aiguille vibrante; Beton pret a l'emploi |
| 19 | 3.6 | Cure et decoffrage | 8d | 2026-01-13 | 2026-01-22 | 18 | Ouvrier A; Ouvrier B; Macon A; Macon B |
| 21 | 4 | **Fabrication des Profilees** | 17d | 2025-12-30 | 2026-01-21 | 8 |  |
| 22 | 4.1 | Coupe profilés | 4d | 2025-12-30 | 2026-01-02 |  | Metallier A; Mettalier B; Profiles IPE,HEA |
| 23 | 4.2 | Soudure éléments | 6d | 2026-01-05 | 2026-01-12 | 22 | Soudeur A; Soudeur B |
| 24 | 4.3 | Perçage pour boulonnage | 3d | 2026-01-13 | 2026-01-15 | 23 | Metallier A; Mettalier B |
| 25 | 4.4 | Protection anticorrosion | 4d | 2026-01-16 | 2026-01-21 | 24 | Metallier A; Mettalier B |
| 27 | 5 | **TRANSPORT & STOCKAGE** | 2d | 2026-01-22 | 2026-01-23 | 21 |  |
| 28 | 5.1 | Transport éléments charpente | 2d | 2026-01-22 | 2026-01-23 | 25 | Chef de chantier; Ouvrier C; Conducteur A; Grutier; Camion plateaux; Grue mobile; Ouvrier D; Ouvrier E |

| ID | WBS | Task | Duration | Start | Finish | Predecessors | Resources |
| --- | --- | --- | --- | --- | --- | --- | --- |
| 30 | 6 | **MONTAGE CHARPENTE** | 20d | 2026-01-26 | 2026-02-20 | 13, 27 |  |
| 31 | 6.1 | Pose poteaux | 5d | 2026-01-26 | 2026-01-30 |  | Chef de chantier; Grutier; Monteur A; Monteur B; Monteur C; Monteur D; Ouvrier A; Ouvrier B; Niveau; Grue mobile; Nacelle |
| 32 | 6.2 | Pose poutres | 5d | 2026-02-02 | 2026-02-06 | 31 | Chef de chantier; Ouvrier A; Ouvrier B; Monteur A; Monteur B; Monteur C; Monteur D; Grutier |
| 33 | 6.3 | Pose pannes et contreventements | 6d | 2026-02-09 | 2026-02-16 | 32 | Chef de chantier; Ouvrier A; Ouvrier B; Monteur A; Monteur B; Monteur C; Monteur D; Grutier |
| 34 | 6.4 | Soudure de réglage et reparation | 2d | 2026-02-17 | 2026-02-18 | 33 | Soudeur A; Ouvrier A; Chef de chantier |
| 35 | 6.5 | Serrage final et contrôle | 2d | 2026-02-19 | 2026-02-20 | 34 | Monteur A; Ouvrier A; Chef de chantier |
| 37 | 7 | **CLOISONS EXTÉRIEURES et isolations** | 11d | 2026-02-23 | 2026-03-09 | 30 |  |
| 38 | 7.1 | Pose ossature secondaire | 3d | 2026-02-23 | 2026-02-25 |  | Ouvrier A; Ouvrier B; Ouvrier C |
| 39 | 7.2 | Pose panneaux sandwich | 5d | 2026-02-26 | 2026-03-04 | 38 | Ouvrier A; Ouvrier B; Ouvrier C; Pannaux sandwich |
| 40 | 7.3 | Étanchéité et joints | 3d | 2026-03-05 | 2026-03-09 | 39 | Ouvrier A; Ouvrier B; Ouvrier C |
| 42 | 8 | **CONTRÔLE FINAL et reception** | 4d | 2026-03-10 | 2026-03-13 | 37 |  |
| 43 | 8.1 | Vérification boulonnage | 2d | 2026-03-10 | 2026-03-11 |  | Chef de chantier; Ouvrier A; Monteur A |
| 44 | 8.2 | Vérification alignement | 2d | 2026-03-10 | 2026-03-11 |  | Ingenieur; Topographe; Ouvrier B |
| 45 | 8.3 | Nettoyage chantier | 2d | 2026-03-12 | 2026-03-13 | 44, 43 | Chef de chantier; Ouvrier A |
