# Projet batiment R+4

Schedule from ProjectLibre, 2026-01-01 to 2026-09-02.

## Calendars

- Standard: Mon-Fri 08:00-12:00, 13:00-17:00; Sat-Sun off.

## Resources

| Resource | Group | Rate |
| --- | --- | --- |
| Non attribué |  |  |
| Chef de chantier | 1 | 15 |
| Maçons | 2 | 13 |
| Coffreurs | 3 | 13 |
| Ferrailleurs | 4 | 13 |
| Manœuvres | 5 | 10 |
| Conducteur |  | 14 |
| Grutier | 6 | 15 |
| Topographe | 8 | 20 |
| Pelle mécanique | 9 | 2000 |
| Grue | 6 | 3000 |
| Rouleau compresseur | 10 | 100 |

## Schedule

| ID | WBS | Task | Duration | Start | Finish | Predecessors | Resources |
| --- | --- | --- | --- | --- | --- | --- | --- |
| 1 | 1 | **Préparation du chantier** | 10d | 2026-01-01 | 2026-01-14 |  |  |
| 2 | 1.1 | Installation de chantier | 5d | 2026-01-01 | 2026-01-07 |  | Chef de chantier; Manœuvres [200%] |
| 3 | 1.2 | Clôture + signalisation | 3d | 2026-01-08 | 2026-01-12 | 2 | Manœuvres [300%] |
| 4 | 1.3 | Implantation topographique | 2d | 2026-01-13 | 2026-01-14 | 3 | Chef de chantier; Manœuvres; Topographe |
| 6 | 2 | **Terrassement** | 12d | 2026-01-15 | 2026-01-30 | 1 |  |
| 7 | 2.1 | Décapage | 2d | 2026-01-15 | 2026-01-16 |  | Manœuvres [200%] |
| 8 | 2.2 | Fouille en pleine masse | 5d | 2026-01-19 | 2026-01-23 | 7 | Conducteur; Pelle mécanique; Manœuvres [200%] |
| 9 | 2.3 | Fouilles en rigoles | 3d | 2026-01-26 | 2026-01-28 | 8 | Maçons [300%] |
| 10 | 2.4 | Nivellement + compactage | 2d | 2026-01-29 | 2026-01-30 | 9 | Manœuvres [200%]; Rouleau compresseur |
| 12 | 3 | **Fondation** | 12d | 2026-02-02 | 2026-02-17 | 6 |  |
| 13 | 3.1 | Coffrage fondations | 4d | 2026-02-02 | 2026-02-05 |  | Coffreurs [400%] |
| 14 | 3.2 | Ferraillage fondations | 4d | 2026-02-02 | 2026-02-05 |  | Ferrailleurs [400%] |
| 15 | 3.3 | Bétonnage fondations | 2d | 2026-02-06 | 2026-02-09 | 13, 14 | Grutier; Maçons [400%] |
| 16 | 3.4 | Cure béton | 6d | 2026-02-10 | 2026-02-17 | 15 |  |
| 18 | 4 | **Soubassement** | 19d | 2026-02-18 | 2026-03-16 | 12 |  |
| 19 | 4.1 | Élévation murs de soubassement | 5d | 2026-02-18 | 2026-02-24 |  | Maçons [400%] |
| 20 | 4.2 | Remblaiement périphérique | 3d | 2026-02-25 | 2026-02-27 | 19 | Manœuvres |
| 21 | 4.3 | Dallage RDC | 5d | 2026-03-02 | 2026-03-06 | 20 | Coffreurs [400%] |
| 22 | 4.4 | Cure | 6d | 2026-03-09 | 2026-03-16 | 21 |  |
| 24 | 5 | **Structure du RDC** | 23d | 2026-03-17 | 2026-04-16 | 18 |  |
| 25 | 5.1 | **Poteaux** | 12d | 2026-03-17 | 2026-04-01 |  |  |
| 26 | 5.1.1 | Coffrage | 3d | 2026-03-17 | 2026-03-19 |  | Coffreurs [400%] |
| 27 | 5.1.2 | Ferraillage | 3d | 2026-03-17 | 2026-03-19 |  | Ferrailleurs [400%] |
| 28 | 5.1.3 | Bétonnage | 2d | 2026-03-20 | 2026-03-23 | 27, 26 | Manœuvres [300%]; Maçons [400%]; Grutier |
| 29 | 5.1.4 | Décoffrage+cure | 7d | 2026-03-24 | 2026-04-01 | 28 | Manœuvres [300%]; Maçons [200%] |

| ID | WBS | Task | Duration | Start | Finish | Predecessors | Resources |
| --- | --- | --- | --- | --- | --- | --- | --- |
| 31 | 5.2 | **Poutres+Dalle** | 11d | 2026-04-02 | 2026-04-16 | 25 |  |
| 32 | 5.2.1 | Coffrage | 5d | 2026-04-02 | 2026-04-08 |  | Coffreurs [400%] |
| 33 | 5.2.2 | Ferraillage | 5d | 2026-04-02 | 2026-04-08 |  | Ferrailleurs [400%] |
| 34 | 5.2.3 | Bétonnage | 2d | 2026-04-09 | 2026-04-10 | 33, 32 | Maçons [600%]; Manœuvres [300%] |
| 35 | 5.2.4 | Décoffrage+cure | 4d | 2026-04-13 | 2026-04-16 | 34 | Maçons [300%]; Manœuvres [300%] |
| 38 | 6 | **Structure du 1ere etage** | 26d | 2026-04-17 | 2026-05-22 | 24 |  |
| 39 | 6.1 | **Poteaux** | 12d | 2026-04-17 | 2026-05-04 |  |  |
| 40 | 6.1.1 | Coffrage | 3d | 2026-04-17 | 2026-04-21 |  | Coffreurs [400%] |
| 41 | 6.1.2 | Ferraillage | 3d | 2026-04-17 | 2026-04-21 |  | Ferrailleurs [400%] |
| 42 | 6.1.3 | Bétonnage | 2d | 2026-04-22 | 2026-04-23 | 40, 41 | Manœuvres [300%]; Maçons [400%]; Grutier |
| 43 | 6.1.4 | Décoffrage+cure | 7d | 2026-04-24 | 2026-05-04 | 42 | Manœuvres [300%]; Maçons [200%] |
| 45 | 6.2 | **Poutres+Dalle** | 14d | 2026-05-05 | 2026-05-22 | 39 |  |
| 46 | 6.2.1 | Coffrage | 5d | 2026-05-05 | 2026-05-11 |  | Coffreurs [400%] |
| 47 | 6.2.2 | Ferraillage | 5d | 2026-05-05 | 2026-05-11 |  | Ferrailleurs [400%] |
| 48 | 6.2.3 | Bétonnage | 2d | 2026-05-12 | 2026-05-13 | 46, 47 | Maçons [600%]; Manœuvres [300%] |
| 49 | 6.2.4 | Décoffrage+cure | 7d | 2026-05-14 | 2026-05-22 | 48 | Maçons [300%]; Manœuvres [300%] |
| 51 | 7 | **Structure du 2eme etage** | 26d | 2026-05-26 | 2026-06-30 | 38 |  |
| 52 | 7.1 | **Poteaux** | 12d | 2026-05-26 | 2026-06-10 |  |  |
| 53 | 7.1.1 | Coffrage | 3d | 2026-05-26 | 2026-05-28 |  | Coffreurs [400%] |
| 54 | 7.1.2 | Ferraillage | 3d | 2026-05-26 | 2026-05-28 |  | Ferrailleurs [400%] |
| 55 | 7.1.3 | Bétonnage | 2d | 2026-05-29 | 2026-06-01 | 53, 54 | Manœuvres [300%]; Maçons [400%]; Grutier |
| 56 | 7.1.4 | Décoffrage+cure | 7d | 2026-06-02 | 2026-06-10 | 55 | Manœuvres [300%]; Maçons [200%] |
| 58 | 7.2 | **Poutres+Dalle** | 14d | 2026-06-11 | 2026-06-30 | 52 |  |
| 59 | 7.2.1 | Coffrage | 5d | 2026-06-11 | 2026-06-17 |  | Coffreurs [400%] |
| 60 | 7.2.2 | Ferraillage | 5d | 2026-06-11 | 2026-06-17 |  | Ferrailleurs [400%] |
| 61 | 7.2.3 | Bétonnage | 2d | 2026-06-18 | 2026-06-19 | 60, 59 | Maçons [600%]; Manœuvres [300%] |
| 62 | 7.2.4 | Décoffrage+cure | 7d | 2026-06-22 | 2026-06-30 | 61 | Maçons [300%]; Manœuvres [300%] |

| ID | WBS | Task | Duration | Start | Finish | Predecessors | Resources |
| --- | --- | --- | --- | --- | --- | --- | --- |
| 64 | 8 | **Structure du 3eme etage** | 23d | 2026-07-01 | 2026-07-31 | 51 |  |
| 65 | 8.1 | **Poteaux** | 12d | 2026-07-01 | 2026-07-16 |  |  |
| 66 | 8.1.1 | Coffrage | 3d | 2026-07-01 | 2026-07-03 |  | Coffreurs [400%] |
| 67 | 8.1.2 | Ferraillage | 3d | 2026-07-01 | 2026-07-03 |  | Ferrailleurs [400%] |
| 68 | 8.1.3 | Bétonnage | 2d | 2026-07-06 | 2026-07-07 | 66, 67 | Manœuvres [300%]; Maçons [400%]; Grutier |
| 69 | 8.1.4 | Décoffrage+cure | 7d | 2026-07-08 | 2026-07-16 | 68 | Manœuvres [300%]; Maçons [200%] |
| 71 | 8.2 | **Poutres+Dalle** | 11d | 2026-07-17 | 2026-07-31 | 65 |  |
| 72 | 8.2.1 | Coffrage | 5d | 2026-07-17 | 2026-07-23 |  | Coffreurs [400%] |
| 73 | 8.2.2 | Ferraillage | 5d | 2026-07-17 | 2026-07-23 |  | Ferrailleurs [400%] |
| 74 | 8.2.3 | Bétonnage | 2d | 2026-07-24 | 2026-07-27 | 73, 72 | Maçons [600%]; Manœuvres [300%] |
| 75 | 8.2.4 | Décoffrage+cure | 4d | 2026-07-28 | 2026-07-31 | 74 | Maçons [300%]; Manœuvres [300%] |
| 77 | 9 | **Structure du 4eme etage** | 23d | 2026-08-03 | 2026-09-02 | 64 |  |
| 78 | 9.1 | **Poteaux** | 12d | 2026-08-03 | 2026-08-18 |  |  |
| 79 | 9.1.1 | Coffrage | 3d | 2026-08-03 | 2026-08-05 |  | Coffreurs [400%] |
| 80 | 9.1.2 | Ferraillage | 3d | 2026-08-03 | 2026-08-05 |  | Ferrailleurs [400%] |
| 81 | 9.1.3 | Bétonnage | 2d | 2026-08-06 | 2026-08-07 | 79, 80 | Manœuvres [300%]; Maçons [400%]; Grutier |
| 82 | 9.1.4 | Décoffrage+cure | 7d | 2026-08-10 | 2026-08-18 | 81 | Manœuvres [300%]; Maçons [200%] |
| 84 | 9.2 | **Poutres+Dalle** | 11d | 2026-08-19 | 2026-09-02 | 78 |  |
| 85 | 9.2.1 | Coffrage | 5d | 2026-08-19 | 2026-08-25 |  | Coffreurs [400%] |
| 86 | 9.2.2 | Ferraillage | 5d | 2026-08-19 | 2026-08-25 |  | Ferrailleurs [400%] |
| 87 | 9.2.3 | Bétonnage | 2d | 2026-08-26 | 2026-08-27 | 86, 85 | Maçons [600%]; Manœuvres [300%] |
| 88 | 9.2.4 | Décoffrage+cure | 4d | 2026-08-28 | 2026-09-02 | 87 | Maçons [300%]; Manœuvres [300%] |
